# RDMP Core

Schedule from MS Project, 2018-04-03 to 2018-12-10, A marks actual dates.
Health Informatics Service (University of Dundee)

## Calendars

- Standard: Mon-Fri 08:00-12:00, 13:00-17:00; Sat-Sun off.

## Resources

| Resource |
| --- |
| 1 |
| 2 |
| 3 |

## Schedule

| ID | WBS | Task | Type | Duration | Start | Finish | Predecessors | Complete | Remaining | Total slack | Free slack | Constraint | Resources | Work | Actual work |
| --- | --- | --- | --- | --- | --- | --- | --- | --- | --- | --- | --- | --- | --- | --- | --- |
| 1 | 1 | **GoDARTS in DB** |  | 180d | 2018-04-03 A | 2018-12-10 |  | 38% | 112.14d | 0d |  |  |  | 768h | 540h |
| 2 | 1.1 | RELEASE TO SAFEHAVEN | milestone | 0d | 2018-05-21 A | 2018-05-21 A |  | 100% |  |  |  |  |  |  |  |
| 3 | 1.2 | Automation Service Redesign |  | 6d | 2018-05-22 A | 2018-06-01 A |  | 100% |  |  |  | start no earlier than 2018-05-22 | 1 | 48h | 48h |
| 4 | 1.3 | **Extract and Release** |  | 23d | 2018-04-03 A | 2018-05-03 A |  | 100% |  |  |  |  |  | 184h | 184h |
| 5 | 1.3.1 | Refactor Custom Data |  | 10d | 2018-04-03 A | 2018-04-16 A |  | 100% |  |  |  |  | 1 | 80h | 80h |
| 6 | 1.3.2 | New extraction component to generate JSON description (HIC plugin) |  | 2d | 2018-04-17 A | 2018-04-18 A | 5 | 100% |  |  |  |  | 1 | 16h | 16h |
| 7 | 1.3.3 | Extract dataset(s) into DB |  | 3d | 2018-04-19 A | 2018-04-23 A | 6 | 100% |  |  |  |  | 1 | 24h | 24h |
| 8 | 1.3.4 | Verify extract to DB maintains the DB datatypes from Catalogue |  | 4d | 2018-04-24 A | 2018-04-27 A | 7 | 100% |  |  |  |  | 1 | 32h | 32h |
| 9 | 1.3.5 | Release from DB to MDF file (ReleaseToFolder-Destination) |  | 2d | 2018-04-30 A | 2018-05-01 A | 8 | 100% |  |  |  |  | 1 | 16h | 16h |
| 10 | 1.3.6 | Send released MDF to SafeHaven (Webremote Destination) |  | 2d | 2018-05-02 A | 2018-05-03 A | 9 | 100% |  |  |  |  | 1 | 16h | 16h |
| 11 | 1.4 | **Import and hydrate** |  | 76d | 2018-05-04 A | 2018-08-17 |  | 57% | 32.33d | 0d |  |  |  | 536h | 308h |
| 12 | 1.4.1 | Install and config RDMP in SafeHaven |  | 3d | 2018-05-04 A | 2018-05-08 A | 4 | 100% |  |  |  |  | 1 | 24h | 24h |
| 13 | 1.4.2 | Remote RDMP setup webservice to receive and save MDF files package |  | 2d | 2018-05-09 A | 2018-05-10 A | 12 | 100% |  |  |  |  | 1 | 16h | 16h |
| 14 | 1.4.3 | **Remote RDMP machine should use DLE to load MDF onto Landing DB** |  | 27d | 2018-05-11 A | 2018-06-18 |  | 83% | 4.5d | 44d |  |  |  | 192h | 160h |
| 15 | 1.4.3.1 | Write tool to attach MDF and reverse engineer ALL tables in the MDF into new catalogues and uses the JSON to import metadata |  | 10d | 2018-05-11 A | 2018-05-29 A | 4 | 100% |  |  |  |  | 1 | 80h | 80h |
| 16 | 1.4.3.2 | Write tool that setup a DLE from the MDF into the reverse engineered catalogues (just set ID in the Catalogue) |  | 5d | 2018-05-30 A | 2018-06-05 A | 15 | 100% |  |  |  |  | 1 | 40h | 40h |
| 17 | 1.4.3.3 | Manual setup: run the above tools |  | 2d | 2018-06-13 | 2018-06-14 | 16, 12, 13, 18, 15 |  |  | 44d | 0d |  | 1 | 16h |  |
| 18 | 1.4.3.4 | Write DLE plugin that uses JSON to merge metadata |  | 5d | 2018-06-06 A | 2018-06-12 A | 16, 15, 4 | 100% |  |  |  |  | 1 | 40h | 40h |
| 19 | 1.4.3.5 | Setup Automated Run for the DLE |  | 2d | 2018-06-15 | 2018-06-18 | 18, 15, 16, 17 |  |  | 44d |  |  | 1 | 16h |  |
| 20 | 1.4.4 | **Remote RDMP machine should use DLE from Landing to Working** |  | 40d | 2018-06-25 A | 2018-08-17 |  | 36% | 25.79d | 0d |  |  |  | 304h | 108h |
| 21 | 1.4.4.1 | Manual setup: Clone Landing DB into Working DB | milestone | 0d | 2018-07-11 A | 2018-07-11 A | 14 | 100% |  |  |  |  | 1 |  |  |
| 22 | 1.4.4.2 | **Setup DLE job (DB to DB)** |  | 6d | 2018-06-25 A | 2018-07-02 A |  | 100% |  |  |  |  |  | 48h | 48h |
| 23 | 1.4.4.2.1 | Write tool that creates one DLE per dataset from Landing to Working (Remote DB attacher) |  | 3d | 2018-06-25 A | 2018-06-27 A | 14 | 100% |  |  |  |  | 1 | 24h | 24h |
| 24 | 1.4.4.2.2 | Run the tool and verify results |  | 3d | 2018-06-28 A | 2018-07-02 A | 23 | 100% |  |  |  |  | 1 | 24h | 24h |

| ID | WBS | Task | Duration | Start | Finish | Predecessors | Complete | Remaining | Total slack | Free slack | Resources | Work | Actual work |
| --- | --- | --- | --- | --- | --- | --- | --- | --- | --- | --- | --- | --- | --- |
| 25 | 1.4.4.3 | **Write DLE plugin for supporting R/SASS/STATA scripts running** | 32d | 2018-07-03 A | 2018-08-15 |  | 25% | 24d | 0d |  |  | 240h | 60h |
| 26 | 1.4.4.3.1 | plugin to run SASS scripts | 2w | 2018-07-03 A | 2018-07-16 | 22 | 75% | 0.5w | 22d |  | 1 | 80h | 60h |
| 27 | 1.4.4.3.2 | plugin to run R scripts | 2w | 2018-07-19 | 2018-08-01 | 22 |  |  | 10d |  | 1 | 80h |  |
| 28 | 1.4.4.3.3 | plugin to run STATA scripts | 2w | 2018-08-02 | 2018-08-15 | 22 |  |  | 0d |  | 1 | 80h |  |
| 29 | 1.4.4.4 | Automation Service setup for DLE Landing to Working | 2d | 2018-08-16 | 2018-08-17 | 24, 25 |  |  | 0d |  | 1 | 16h |  |
| 30 | 1.5 | **Automation** | 25d | 2018-08-20 A | 2018-09-21 |  | 11% | 22.32d | 0d |  |  |  |  |
| 31 | 1.5.1 | **Automate extraction to run periodically** | 5d | 2018-08-20 A | 2018-08-24 |  | 42% | 2.92d | 0d |  |  |  |  |
| 32 | 1.5.1.1 | Setup auto extraction to create Request/Release ticket in JIRA | 5d | 2018-08-20 | 2018-08-24 | 11 |  |  | 0d |  |  |  |  |
| 33 | 1.5.1.2 | Extract all configs at the same time before releasing | 2d | 2018-08-20 A | 2018-08-21 A | 11 | 100% |  |  |  |  |  |  |
| 34 | 1.5.1.3 | Stop extracting multiple datasets creating the DB at the same time | 1d | 2018-08-23 A | 2018-08-23 A | 33 | 100% |  |  |  |  |  |  |
| 35 | 1.5.1.4 | Verify the Cohort Refresh pipeline is running ok | 1d | 2018-08-24 A | 2018-08-24 | 34 | 75% | 0.25d | 0d |  |  |  |  |
| 36 | 1.5.2 | Automate Release to run periodically | 3d | 2018-09-19 | 2018-09-21 | 38, 31, 37 |  |  | 0d |  |  |  |  |
| 37 | 1.5.3 | Enable Enqueue Extraction to run Release pipeline as well | 5d | 2018-08-27 | 2018-08-31 | 31 |  |  | 0d |  |  |  |  |
| 38 | 1.5.4 | **Remote RDMP pull logs from webservice (optional as we can remote in and run RDMP)** | 12d | 2018-09-03 | 2018-09-18 |  |  |  | 0d |  |  |  |  |
| 39 | 1.5.4.1 | DESIGN: see if we can use ELK or a better solution (UDP logging etc.) | 2d | 2018-09-03 | 2018-09-04 | 31, 37 |  |  | 0d |  |  |  |  |
| 40 | 1.5.4.2 | setup logging for DLE jobs (DataLoadJobs but with a specific name) | 1d | 2018-09-05 | 2018-09-05 | 39 |  |  | 6d | 0d |  |  |  |
| 41 | 1.5.4.3 | setup webservice method to scoop the logs based on date-range (flag already sent logs) | 3d | 2018-09-06 | 2018-09-10 | 40 |  |  | 6d |  |  |  |  |
| 42 | 1.5.4.4 | action on the LogViewer (?) or on the Remote UI (?) to retrieve the latest logs | 2w | 2018-09-05 | 2018-09-18 | 39 |  |  | 0d |  |  |  |  |
| 43 | 1.5.4.5 | save retrieved logs in the logviewer (try to avoid duplication!) | 2d | 2018-09-05 | 2018-09-06 | 39 |  |  | 8d |  |  |  |  |
| 44 | 1.6 | **Remote triggering** | 56d | 2018-09-24 | 2018-12-10 | 30 |  |  | 0d |  |  |  |  |
| 45 | 1.6.1 | **New menu: "Request Data Refresh"** | 12d | 2018-09-24 | 2018-10-09 |  |  |  | 0d |  |  |  |  |
| 46 | 1.6.1.1 | Enqueue request OR clear out the "LastExtracted" field to force re-release (or both?) | 2d | 2018-09-24 | 2018-09-25 |  |  |  | 0d |  |  |  |  |
| 47 | 1.6.1.2 | Extra options? | 1d | 2018-09-26 | 2018-09-26 | 46 |  |  | 0d |  |  |  |  |
| 48 | 1.6.1.3 | Acknowledge request (messagebox: show old ones which have been removed!) | 3d | 2018-09-27 | 2018-10-01 | 47 |  |  | 0d |  |  |  |  |
| 49 | 1.6.1.4 | Log requesting user | 2d | 2018-10-02 | 2018-10-03 | 48 |  |  | 0d |  |  |  |  |
| 50 | 1.6.1.5 | Add requests to queues in the DB (only save latest unfulfilled) | 2d | 2018-10-04 | 2018-10-05 | 49 |  |  | 0d |  |  |  |  |
| 51 | 1.6.1.6 | Throttle so that we only keep ONE active over predefined period of time. | 2d | 2018-10-08 | 2018-10-09 | 50 |  |  | 0d |  |  |  |  |

| ID | WBS | Task | Duration | Start | Finish | Predecessors | Complete | Remaining | Total slack | Free slack | Resources | Work | Actual work |
| --- | --- | --- | --- | --- | --- | --- | --- | --- | --- | --- | --- | --- | --- |
| 52 | 1.6.2 | **Webservice: get new requests method** | 6d | 2018-10-10 | 2018-10-17 | 45 |  |  | 0d |  |  |  |  |
| 53 | 1.6.2.1 | Get latest "non acknowledged" or overridden one | 6d | 2018-10-10 | 2018-10-17 |  |  |  | 0d |  |  |  |  |
| 54 | 1.6.3 | **Automation service new source: run from remote** | 16d | 2018-10-18 | 2018-11-08 | 52 |  |  | 0d |  |  |  |  |
| 55 | 1.6.3.1 | **Get latest request from remote** | 2d | 2018-10-18 | 2018-10-19 |  |  |  | 0d |  |  |  |  |
| 56 | 1.6.3.1.1 | verify X months have passed since the latest | 2d | 2018-10-18 | 2018-10-19 |  |  |  | 0d |  |  |  |  |
| 57 | 1.6.3.1.2 | set a time to run it (nightly?) | 2d | 2018-10-18 | 2018-10-19 |  |  |  | 0d |  |  |  |  |
| 58 | 1.6.3.2 | run automated extraction | 4d | 2018-10-22 | 2018-10-25 | 55 |  |  | 0d |  |  |  |  |
| 59 | 1.6.3.3 | run automated release | 4d | 2018-10-26 | 2018-10-31 | 58 |  |  | 0d |  |  |  |  |
| 60 | 1.6.3.4 | add fulfilled request ID on posted message | 6d | 2018-11-01 | 2018-11-08 | 59 |  |  | 0d |  |  |  |  |
| 61 | 1.6.4 | **Webservice: receive new release** | 20d | 2018-11-09 | 2018-12-06 | 54 |  |  | 0d |  |  |  |  |
| 62 | 1.6.4.1 | Set refresh request to stage 2 (received MDF) | 6d | 2018-11-09 | 2018-11-16 |  |  |  | 0d |  |  |  |  |
| 63 | 1.6.4.2 | Save MDF to location | 2d | 2018-11-19 | 2018-11-20 | 62 |  |  | 0d |  |  |  |  |
| 64 | 1.6.4.3 | Add DLE component that can set the refresh request to various stages if present | 12d | 2018-11-21 | 2018-12-06 | 63 |  |  | 0d |  |  |  |  |
| 65 | 1.6.5 | **New UI: show existing requests** | 2d | 2018-12-07 | 2018-12-10 | 61 |  |  | 0d |  |  |  |  |
| 66 | 1.6.5.1 | Show stages of each request, user and date | 2d | 2018-12-07 | 2018-12-10 |  |  |  | 0d |  |  |  |  |
| 67 | 2 | **Anonymization Migration** | 41d | 2018-04-03 A | 2018-05-29 |  | 5% | 39d | 139d |  |  | 328h | 16h |
| 68 | 2.1 | Export Ano-Tables (concepts configuration) | 1d | 2018-04-03 A | 2018-04-03 A |  | 100% |  |  |  | 2 | 8h | 8h |
| 69 | 2.2 | Export Ano Plan for a Catalogue | 1d | 2018-04-04 A | 2018-04-04 A | 68 | 100% |  |  |  | 2 | 8h | 8h |
| 70 | 2.3 | Import & execute all plans for all catalogues | 5d | 2018-05-02 | 2018-05-08 | 71 |  |  | 139d | 0d | 2 | 40h |  |
| 71 | 2.4 | **Create DLE configuration** | 19d | 2018-04-05 | 2018-05-01 | 69 |  |  | 139d | 0d |  | 112h |  |
| 72 | 2.4.1 | Test DLE on DemoVM against huge DB (400mil records) | 2d | 2018-04-05 | 2018-04-06 |  |  |  | 147d | 0d | 2 | 16h |  |
| 73 | 2.4.2 | Create DLE that loads everything in 1 pass | 2d | 2018-04-09 | 2018-04-10 | 72 |  |  | 147d | 0d | 2 | 16h |  |
| 74 | 2.4.3 | **Design Chunking solution** | 4d | 2018-04-11 | 2018-04-16 |  |  |  | 147d |  |  | 32h |  |
| 75 | 2.4.3.1 | Solve issues with datasets with NULL dates | 2d | 2018-04-11 | 2018-04-12 | 73 |  |  | 147d | 0d | 2 | 16h |  |
| 76 | 2.4.3.2 | Investigate datasets with NO dates | 2d | 2018-04-13 | 2018-04-16 | 75 |  |  | 147d | 0d | 2 | 16h |  |
| 77 | 2.4.4 | Create Double LoadProgress? | 3d | 2018-04-17 | 2018-04-19 | 76 |  |  | 147d |  | 2 | 24h |  |
| 78 | 2.4.5 | Aut. Server support load progress with no cache progress | 3d | 2018-04-27 | 2018-05-01 |  |  |  | 139d |  | 2 | 24h |  |
| 79 | 2.5 | Implement Migration for Catalogue Filters | 5d | 2018-05-16 | 2018-05-22 | 70 |  |  | 144d |  | 2 | 40h |  |
| 80 | 2.6 | Implement Migration for Aggregate Configurations | 5d | 2018-04-20 | 2018-04-26 | 68 |  |  | 162d |  | 2 | 40h |  |
| 81 | 2.7 | Implement Migration for Parameters | 5d | 2018-05-23 | 2018-05-29 | 70 |  |  | 139d |  | 2 | 40h |  |
| 82 | 2.8 | Implement Migration for CICs (will that include params?) | 5d | 2018-05-09 | 2018-05-15 | 70 |  |  | 149d |  | 2 | 40h |  |

| ID | WBS | Task | Duration | Start | Finish | Predecessors | Complete | Resources | Work | Actual work |
| --- | --- | --- | --- | --- | --- | --- | --- | --- | --- | --- |
| 83 | 3 | **Imaging** | 48d | 2018-04-03 A | 2018-06-07 A |  | 100% |  | 384h | 384h |
| 84 | 3.1 | Get CachingSCP working | 10d | 2018-04-03 A | 2018-04-16 A |  | 100% | 3 | 80h | 80h |
| 85 | 3.2 | DLE setup to fetch & load data | 3d | 2018-04-17 A | 2018-04-19 A | 84 | 100% | 3 | 24h | 24h |
| 86 | 3.3 | Setup Automation for DLE to run overnight to avoid peak hours | 2d | 2018-04-17 A | 2018-04-18 A | 84 | 100% |  |  |  |
| 87 | 3.4 | Deal with bandwidth limitations & remote servers overload (governance) | 10d | 2018-05-04 A | 2018-05-17 A | 88 | 100% | 3 | 80h | 80h |
| 88 | 3.5 | New extraction solution | 10d | 2018-04-20 A | 2018-05-03 A | 85 | 100% | 3 | 80h | 80h |
| 89 | 3.6 | Implement Migration for DataExport projects | 15d | 2018-05-18 A | 2018-06-07 A | 87 | 100% | 3 | 120h | 120h |
